# DN2NDHOME

Schedule from MS Project, 2024-01-22 to 2024-07-09, costs in ₫, A marks actual dates.
Phần mềm hỗ trợ tìm kiếm và cho thuê phòng trọ
DDien

## Calendars

- Standard: Mon-Fri 08:00-12:00, 13:00-17:00; Sat-Sun off.

## Resources

| Resource | Rate |
| --- | --- |
| Thư | 80000 |
| Diện | 150000 |
| Quân | 80000 |

## Schedule

| ID | WBS | Task | Type | Duration | Start | Finish | Predecessors | Complete | Baseline start | Baseline finish | Baseline duration | Resources | Work | Actual work | Cost | Baseline cost | Actual cost |
| --- | --- | --- | --- | --- | --- | --- | --- | --- | --- | --- | --- | --- | --- | --- | --- | --- | --- |
| 1 | 1 | **Lập kế hoạch dự án** |  | 5d | 2024-01-22 A | 2024-01-26 A |  | 100% | 2024-01-22 | 2024-01-26 | 5d |  | 88h | 88h | 13,200,000 | 27,280,000 | 13,200,000 |
| 2 | 1.1 | Xác định mục tiêu dự án |  | 1d | 2024-01-22 A | 2024-01-22 A |  | 100% | 2024-01-22 | 2024-01-22 | 1d | Diện | 8h | 8h | 1,200,000 | 2,480,000 | 1,200,000 |
| 3 | 1.2 | Phân tích rủi ro |  | 1d | 2024-01-23 A | 2024-01-23 A | 2 | 100% | 2024-01-23 | 2024-01-23 | 1d | Diện | 8h | 8h | 1,200,000 | 2,480,000 | 1,200,000 |
| 4 | 1.3 | Lập lịch trình |  | 2d | 2024-01-24 A | 2024-01-25 A | 3 | 100% | 2024-01-24 | 2024-01-25 | 2d | Diện | 16h | 16h | 2,400,000 | 4,960,000 | 2,400,000 |
| 5 | 1.4 | Xác định nguồn lực |  | 1d | 2024-01-24 A | 2024-01-24 A | 4SS | 100% | 2024-01-24 | 2024-01-24 | 1d | Diện | 8h | 8h | 1,200,000 | 2,480,000 | 1,200,000 |
| 6 | 1.5 | Xác định tiêu chí thành công |  | 1d | 2024-01-24 A | 2024-01-24 A | 4SS | 100% | 2024-01-24 | 2024-01-24 | 1d | Diện | 8h | 8h | 1,200,000 | 2,480,000 | 1,200,000 |
| 7 | 1.6 | Lập kế hoạch quản lý dự án |  | 2d | 2024-01-24 A | 2024-01-25 A | 4SS | 100% | 2024-01-24 | 2024-01-25 | 2d | Diện | 16h | 16h | 2,400,000 | 4,960,000 | 2,400,000 |
| 8 | 1.7 | Lập kế hoạch giao tiếp |  | 1d | 2024-01-26 A | 2024-01-26 A | 7 | 100% | 2024-01-26 | 2024-01-26 | 1d | Diện | 8h | 8h | 1,200,000 | 2,480,000 | 1,200,000 |
| 9 | 1.8 | Lập kế hoạch tài chính |  | 1d | 2024-01-24 A | 2024-01-24 A | 7SS | 100% | 2024-01-24 | 2024-01-24 | 1d | Diện | 8h | 8h | 1,200,000 | 2,480,000 | 1,200,000 |
| 10 | 1.9 | Xác định tiêu chuẩn và tiêu chí chất lượng |  | 0.5d | 2024-01-24 A | 2024-01-24 A | 7SS | 100% | 2024-01-24 | 2024-01-24 | 0.5d | Diện | 4h | 4h | 600,000 | 1,240,000 | 600,000 |
| 11 | 1.10 | Lập kế hoạch quản lý rủi ro |  | 0.5d | 2024-01-24 A | 2024-01-24 A | 9SS | 100% | 2024-01-24 | 2024-01-24 | 0.5d | Diện | 4h | 4h | 600,000 | 1,240,000 | 600,000 |
| 12 | 1.11 | Lập kế hoạch dự án - Complete | milestone | 0d | 2024-01-26 A | 2024-01-26 A |  | 100% | 2024-01-26 | 2024-01-26 | 0d |  |  |  |  |  |  |
| 13 | 2 | **Khảo sát yêu cầu khách hàng** |  | 14d | 2024-01-26 A | 2024-02-15 A |  | 100% | 2024-01-26 | 2024-02-15 | 14d |  | 112h | 112h | 16,800,000 | 16,800,000 | 16,800,000 |
| 14 | 2.1 | **Lần gặp gỡ thứ nhất** |  | 4d | 2024-01-26 A | 2024-01-31 A |  | 100% | 2024-01-26 | 2024-01-31 | 4d |  | 32h | 32h | 4,800,000 | 4,800,000 | 4,800,000 |
| 15 | 2.1.1 | Chuẩn bị trước cuộc họp |  | 1d | 2024-01-26 A | 2024-01-26 A | 7 | 100% | 2024-01-26 | 2024-01-26 | 1d | Diện | 8h | 8h | 1,200,000 | 1,200,000 | 1,200,000 |
| 16 | 2.1.2 | Gặp gỡ khách hàng |  | 1d | 2024-01-29 A | 2024-01-29 A | 15 | 100% | 2024-01-29 | 2024-01-29 | 1d | Diện | 8h | 8h | 1,200,000 | 1,200,000 | 1,200,000 |
| 17 | 2.1.3 | Phân tích và tổng hợp thông tin |  | 2d | 2024-01-30 A | 2024-01-31 A | 16 | 100% | 2024-01-30 | 2024-01-31 | 2d | Diện | 16h | 16h | 2,400,000 | 2,400,000 | 2,400,000 |
| 18 | 2.2 | **Lần gặp gỡ thứ hai** |  | 4d | 2024-02-01 A | 2024-02-06 A |  | 100% | 2024-02-01 | 2024-02-06 | 4d |  | 32h | 32h | 4,800,000 | 4,800,000 | 4,800,000 |
| 19 | 2.2.1 | Chuẩn bị trước cuộc họp |  | 1d | 2024-02-01 A | 2024-02-01 A | 17 | 100% | 2024-02-01 | 2024-02-01 | 1d | Diện | 8h | 8h | 1,200,000 | 1,200,000 | 1,200,000 |
| 20 | 2.2.2 | Gặp gỡ khách hàng |  | 1d | 2024-02-02 A | 2024-02-02 A | 19 | 100% | 2024-02-02 | 2024-02-02 | 1d | Diện | 8h | 8h | 1,200,000 | 1,200,000 | 1,200,000 |
| 21 | 2.2.3 | Phân tích và tổng hợp thông tin |  | 2d | 2024-02-05 A | 2024-02-06 A | 20 | 100% | 2024-02-05 | 2024-02-06 | 2d | Diện | 16h | 16h | 2,400,000 | 2,400,000 | 2,400,000 |
| 22 | 2.3 | **Lần gặp gỡ cuối cùng** |  | 6d | 2024-02-07 A | 2024-02-15 A |  | 100% | 2024-02-07 | 2024-02-15 | 6d |  | 48h | 48h | 7,200,000 | 7,200,000 | 7,200,000 |
| 23 | 2.3.1 | Chuẩn bị trước cuộc họp |  | 1d | 2024-02-07 A | 2024-02-07 A | 21 | 100% | 2024-02-07 | 2024-02-07 | 1d | Diện | 8h | 8h | 1,200,000 | 1,200,000 | 1,200,000 |
| 24 | 2.3.2 | Gặp gỡ khách hàng |  | 1d | 2024-02-08 A | 2024-02-08 A | 23 | 100% | 2024-02-08 | 2024-02-08 | 1d | Diện | 8h | 8h | 1,200,000 | 1,200,000 | 1,200,000 |
| 25 | 2.3.3 | Phân tích và tổng hợp thông tin |  | 2d | 2024-02-09 A | 2024-02-12 A | 24 | 100% | 2024-02-09 | 2024-02-12 | 2d | Diện | 16h | 16h | 2,400,000 | 2,400,000 | 2,400,000 |
| 26 | 2.3.4 | Lập báo cáo và tổng kết |  | 2d | 2024-02-13 A | 2024-02-14 A | 25 | 100% | 2024-02-13 | 2024-02-14 | 2d | Diện | 16h | 16h | 2,400,000 | 2,400,000 | 2,400,000 |
| 27 | 2.3.5 | Khảo sát yêu cầu khách hàng - Complete | milestone | 0d | 2024-02-15 A | 2024-02-15 A |  | 100% | 2024-02-15 | 2024-02-15 | 0d |  |  |  |  |  |  |

Notes:
- 2: Phạm vi dự án: Xác định rơ ràng các tính năng và chức năng chính của phần mềm, bao gồm khả năng t́m kiếm, đặt pḥng, thanh toán, đánh giá, và quản lư thông tin người dùng. / Mục tiêu chính: Xây dựng một ứng dụng phần mềm dễ sử dụng và hiệu quả để giúp người dùng t́m kiếm và cho thuê pḥng trọ một cách thuận tiện và nhanh chóng.
- 3: Rủi ro về dữ liệu: Rủi ro mất mát hoặc phá hoại dữ liệu quan trọng của người dùng. / Rủi ro về bảo mật: Rủi ro lỗ hổng bảo mật có thể dẫn đến việc xâm nhập hoặc truy cập trái phép vào hệ thống. / Rủi ro về khả năng kỹ thuật: Rủi ro liên quan đến khả năng phát triển phần mềm, cũng như tính khả thi của các tính năng và chức năng đề xuất.
- 4: Xác định các giai đoạn chính: Bao gồm phân tích yęu cầu, thiết kế, phát triển, kiểm thử vŕ triển khai. / Xác định milestone: Đặt ra các mốc thời gian quan trọng để theo dői tiến độ của dự án, như việc hoŕn thŕnh các bản demo, bản thử nghiệm, vŕ triển khai sản phẩm.
- 5: Nhân lực: Xác định số lượng và loại h́nh nhân lực cần thiết cho dự án, bao gồm nhà phát triển phần mềm, nhà thiết kế giao diện người dùng, và các chuyên gia khác liên quan. / Tài nguyên kỹ thuật: Xác định và cấp phát các công nghệ và công cụ cần thiết cho việc phát triển và triển khai phần mềm.
- 6: Chất lượng phần mềm: Đảm bảo rằng phần mềm đáp ứng các tiêu chuẩn chất lượng đă đề ra, bao gồm độ ổn định, hiệu suất và tính bảo mật. / Sự hài ḷng của người dùng: Đo lường sự hài ḷng của người dùng thông qua các phản hồi và đánh giá.
- 7: Quản lư dự án Agile hoặc Waterfall: Xác định phương pháp quản lư dự án phù hợp với tính chất và quy mô của dự án. / Lập kế hoạch cho các cuộc họp và báo cáo: Xác định lịch tŕnh và nội dung cho các cuộc họp dự án, cũng như các báo cáo tiến độ và t́nh h́nh dự án.
- 8: Kênh giao tiếp: Xác định và lập kế hoạch cho các kênh giao tiếp với các bên liên quan như đội phát triển, khách hàng, và các bên liên quan khác. / Tương tác thường xuyên: Lên lịch và lập kế hoạch cho các cuộc họp và cập nhật định kỳ với các bên liên quan.
- 9: Ước lượng ngân sách: Xác định chi phí ước lượng cho dự án, bao gồm cả chi phí phát triển, quản lý vŕ triển khai. / Quản lý ngân sách: Đảm bảo rằng ngân sách được quản lý một cách hiệu quả vŕ đảm bảo rằng không có sự vượt ngân sách không đáng kể.
- 10: Kiểm thử và đánh giá: Xác định tiêu chuẩn kiểm thử và đánh giá để đảm bảo chất lượng của sản phẩm. / Kiểm soát chất lượng: Thiết lập các tiêu chuẩn và quy tŕnh để đảm bảo rằng sản phẩm đáp ứng các yêu cầu chất lượng đă đặt ra.
- 11: Xác định rủi ro: Xác định vŕ đánh giá các rủi ro có thể xảy ra trong dự án, bao gồm cả rủi ro về dữ liệu, bảo mật vŕ kỹ thuật. / Quản lý rủi ro: Phát triển kế hoạch hŕnh động để giảm thiểu hoặc loại bỏ các rủi ro, vŕ xác định các biện pháp phňng ngừa khi cần thiết.
- 15: ·Xác định mục tiêu của cuộc họp và chuẩn bị danh sách câu hỏi. / ·Lên lịch và gửi lời mời cho khách hàng.
- 16: ·Tiến hành cuộc họp để thu thập yêu cầu và ư kiến của khách hàng. / ·Ghi chép lại thông tin chính từ cuộc họp.
- 17: ·Tạo bản tóm tắt về yêu cầu của khách hàng từ cuộc họp. / ·Chuẩn bị SRS dự kiến để xác nhận lại yêu cầu với khách hàng trong cuộc gặp gỡ tiếp theo.
- 19: ·Chuẩn bị SRS dự kiến dựa trên yêu cầu từ cuộc họp trước.
- 20: ·Tŕnh bày SRS dự kiến và thảo luận với khách hàng để điều chỉnh và xác nhận lại yêu cầu. / ·Ghi chép lại thông tin từ cuộc họp.
- 21: Cập nhật SRS dự kiến dựa trên phản hồi từ cuộc họp thứ hai.
- 23: Xác nhận lại SRS dự kiến dựa trên phản hồi từ cuộc họp trước.
- 24: ·Tŕnh bày và xác nhận lại SRS cuối cùng với khách hàng. / ·Ghi chép lại thông tin từ cuộc họp.
- 25: Cập nhật SRS cuối cùng dựa trên phản hồi cuối cùng từ khách hàng.
- 26: ·Tạo báo cáo về kết quả của 3 cuộc gặp gỡ và SRS cuối cùng. / ·Tổng kết kết quả và tŕnh bày cho bên quản lư dự án và các bên liên quan.

| ID | WBS | Task | Duration | Start | Finish | Predecessors | Complete | Baseline start | Baseline finish | Baseline duration | Resources | Work | Actual work | Cost | Baseline cost | Actual cost |
| --- | --- | --- | --- | --- | --- | --- | --- | --- | --- | --- | --- | --- | --- | --- | --- | --- |
| 28 | 3 | **Phân tích Thiết kế Hệ thống** | 15d | 2024-02-15 A | 2024-03-07 A |  | 100% | 2024-02-15 | 2024-03-07 | 15d |  | 232h | 232h | 20,240,000 | 22,160,000 | 20,240,000 |
| 29 | 3.1 | **Xem xét SRS và Hiểu rõ yêu cầu từ Khách hàng** | 2d | 2024-02-15 A | 2024-02-16 A |  | 100% | 2024-02-15 | 2024-02-16 | 2d |  | 24h | 24h | 1,920,000 | 1,920,000 | 1,920,000 |
| 30 | 3.1.1 | Đọc và hiểu rõ nội dung của SRS | 2d | 2024-02-15 A | 2024-02-16 A | 26 | 100% | 2024-02-15 | 2024-02-16 | 2d | Thư | 16h | 16h | 1,280,000 | 1,280,000 | 1,280,000 |
| 31 | 3.1.2 | Tổ chức cuộc họp để bàn bạc và làm rõ các yêu cầu không rõ | 1d | 2024-02-16 A | 2024-02-16 A | 30FF | 100% | 2024-02-16 | 2024-02-16 | 1d | Thư | 8h | 8h | 640,000 | 640,000 | 640,000 |
| 32 | 3.2 | **Phân rã Hệ thống thành Các thành phần Phụ hợp** | 2d | 2024-02-19 A | 2024-02-20 A |  | 100% | 2024-02-19 | 2024-02-20 | 2d |  | 24h | 24h | 1,920,000 | 1,920,000 | 1,920,000 |
| 33 | 3.2.1 | Phân tích yêu cầu từ SRS và xác định các chức năng cần thiết | 1d | 2024-02-19 A | 2024-02-19 A | 30 | 100% | 2024-02-19 | 2024-02-19 | 1d | Thư | 8h | 8h | 640,000 | 640,000 | 640,000 |
| 34 | 3.2.2 | Phân chia hệ thống thành các module, giao diện và chức năng con | 2d | 2024-02-19 A | 2024-02-20 A | 30 | 100% | 2024-02-19 | 2024-02-20 | 2d | Thư | 16h | 16h | 1,280,000 | 1,280,000 | 1,280,000 |
| 35 | 3.3 | **Xác định Giao tiếp giữa các Thành phần** | 2d | 2024-02-21 A | 2024-02-22 A |  | 100% | 2024-02-21 | 2024-02-22 | 2d |  | 24h | 24h | 1,920,000 | 1,920,000 | 1,920,000 |
| 36 | 3.3.1 | Xác định cách các thành phần sẽ giao tiếp với nhau | 2d | 2024-02-21 A | 2024-02-22 A | 34 | 100% | 2024-02-21 | 2024-02-22 | 2d | Quân | 16h | 16h | 1,280,000 | 1,280,000 | 1,280,000 |
| 37 | 3.3.2 | Xác định giao diện API nếu cần thiết | 1d | 2024-02-22 A | 2024-02-22 A | 36FF | 100% | 2024-02-22 | 2024-02-22 | 1d | Thư | 8h | 8h | 640,000 | 640,000 | 640,000 |
| 38 | 3.4 | **Thiết kế Giao diện Người dùng (UX/UI)** | 3d | 2024-02-23 A | 2024-02-27 A |  | 100% | 2024-02-23 | 2024-02-27 | 3d |  | 104h | 104h | 8,320,000 | 8,320,000 | 8,320,000 |
| 39 | 3.4.1 | **Phân tích yêu cầu từ SRS và thiết kế giao diện người dùng dựa trên yêu cầu** | 3d | 2024-02-23 A | 2024-02-27 A |  | 100% | 2024-02-23 | 2024-02-27 | 3d | Thư | 80h | 80h | 6,400,000 | 6,400,000 | 6,400,000 |
| 40 | 3.4.1.1 | **Website** | 1d | 2024-02-23 A | 2024-02-23 A |  | 100% | 2024-02-23 | 2024-02-23 | 1d |  | 20h | 20h | 1,600,000 | 1,600,000 | 1,600,000 |
| 41 | 3.4.1.1.1 | UI/UX Đăng nhập | 1d | 2024-02-23 A | 2024-02-23 A | 36 | 100% | 2024-02-23 | 2024-02-23 | 1d | Quân | 8h | 8h | 640,000 | 640,000 | 640,000 |
| 42 | 3.4.1.1.2 | UI/UX Đăng ký | 0.5d | 2024-02-23 A | 2024-02-23 A | 41SS | 100% | 2024-02-23 | 2024-02-23 | 0.5d | Quân | 4h | 4h | 320,000 | 320,000 | 320,000 |
| 43 | 3.4.1.1.3 | UI/UX MainPage | 1d | 2024-02-23 A | 2024-02-23 A | 41SS | 100% | 2024-02-23 | 2024-02-23 | 1d | Quân | 8h | 8h | 640,000 | 640,000 | 640,000 |
| 44 | 3.4.1.2 | **Mobile** | 2d | 2024-02-26 A | 2024-02-27 A |  | 100% | 2024-02-26 | 2024-02-27 | 2d |  | 36h | 36h | 2,880,000 | 2,880,000 | 2,880,000 |
| 45 | 3.4.1.2.1 | UI/UX Trang chủ | 2d | 2024-02-26 A | 2024-02-27 A | 43 | 100% | 2024-02-26 | 2024-02-27 | 2d | Quân | 16h | 16h | 1,280,000 | 1,280,000 | 1,280,000 |
| 46 | 3.4.1.2.2 | UI/UX Thông tin chi tiết | 1d | 2024-02-26 A | 2024-02-26 A | 45SS | 100% | 2024-02-26 | 2024-02-26 | 1d | Quân | 8h | 8h | 640,000 | 640,000 | 640,000 |
| 47 | 3.4.1.2.3 | UI/UX Upload | 0.5d | 2024-02-26 A | 2024-02-26 A | 45SS | 100% | 2024-02-26 | 2024-02-26 | 0.5d | Quân | 4h | 4h | 320,000 | 320,000 | 320,000 |
| 48 | 3.4.1.2.4 | UI/UX Đăng nhập | 0.5d | 2024-02-26 A | 2024-02-26 A | 45SS | 100% | 2024-02-26 | 2024-02-26 | 0.5d | Quân | 4h | 4h | 320,000 | 320,000 | 320,000 |
| 49 | 3.4.1.2.5 | UI/UX Đăng kí | 0.5d | 2024-02-26 A | 2024-02-26 A | 45SS | 100% | 2024-02-26 | 2024-02-26 | 0.5d | Quân | 4h | 4h | 320,000 | 320,000 | 320,000 |
| 50 | 3.4.2 | Tạo wireframes và mockups để minh họa giao diện người dùng | 3d | 2024-02-23 A | 2024-02-27 A | 39FF | 100% | 2024-02-23 | 2024-02-27 | 3d | Thư | 24h | 24h | 1,920,000 | 1,920,000 | 1,920,000 |
| 51 | 3.5 | **Thiết kế Cơ sở Dữ liệu** | 4d | 2024-02-28 A | 2024-03-04 A |  | 100% | 2024-02-28 | 2024-03-04 | 4d |  | 32h | 32h | 2,560,000 | 2,560,000 | 2,560,000 |
| 52 | 3.5.1 | Phân tích yêu cầu dữ liệu từ SRS và thiết kế cơ sở dữ liệu | 3d | 2024-02-28 A | 2024-03-01 A | 50 | 100% | 2024-02-28 | 2024-03-01 | 3d | Thư | 24h | 24h | 1,920,000 | 1,920,000 | 1,920,000 |
| 53 | 3.5.2 | Xác định các quan hệ và các bảng dữ liệu | 1d | 2024-03-04 A | 2024-03-04 A | 52 | 100% | 2024-03-04 | 2024-03-04 | 1d | Thư | 8h | 8h | 640,000 | 640,000 | 640,000 |

| ID | WBS | Task | Type | Duration | Start | Finish | Predecessors | Complete | Baseline start | Baseline finish | Baseline duration | Resources | Work | Actual work | Cost | Baseline cost | Actual cost |
| --- | --- | --- | --- | --- | --- | --- | --- | --- | --- | --- | --- | --- | --- | --- | --- | --- | --- |
| 54 | 3.6 | **Thiết kế Bảo mật** |  | 2d | 2024-03-05 A | 2024-03-07 A |  | 100% | 2024-03-05 | 2024-03-07 | 2d |  | 24h | 24h | 3,600,000 | 5,520,000 | 3,600,000 |
| 55 | 3.6.1 | Phân tích yêu cầu bảo mật từ SRS và thiết kế cơ chế bảo mật |  | 2d | 2024-03-05 A | 2024-03-06 A | 53 | 100% | 2024-03-05 | 2024-03-06 | 2d | Diện | 16h | 16h | 2,400,000 | 3,680,000 | 2,400,000 |
| 56 | 3.6.2 | Xác định các biện pháp bảo mật như xác thực, kiểm soát truy cập |  | 1d | 2024-03-06 A | 2024-03-06 A | 55FF | 100% | 2024-03-06 | 2024-03-06 | 1d | Diện; Quân | 8h | 8h | 1,200,000 | 1,840,000 | 1,200,000 |
| 57 | 3.6.3 | Phân tích Thiết kế Hệ thống - Complete | milestone | 0d | 2024-03-07 A | 2024-03-07 A |  | 100% | 2024-03-07 | 2024-03-07 | 0d |  |  |  |  |  |  |
| 58 | 4 | **Phát triển phần mềm** |  | 42d | 2024-03-07 A | 2024-05-03 A |  | 100% | 2024-03-07 | 2024-05-03 | 42d |  | 1160h | 1160h | 105,680,000 | 129,120,000 | 105,680,000 |
| 59 | 4.1 | Chuẩn bị môi trường phát triển |  | 1d | 2024-03-07 A | 2024-03-07 A | 56 | 100% | 2024-03-07 | 2024-03-07 | 1d | Diện; Quân; Thư | 24h | 24h | 2,480,000 | 2,480,000 | 2,480,000 |
| 60 | 4.2 | **Phát triển Module và Chức năng** |  | 42d | 2024-03-07 A | 2024-05-03 A |  | 100% | 2024-03-07 | 2024-05-03 | 42d |  | 1136h | 1136h | 103,200,000 | 126,640,000 | 103,200,000 |
| 61 | 4.2.1 | **Phát triển Front-end** |  | 38d | 2024-03-08 A | 2024-04-30 A |  | 100% | 2024-03-08 | 2024-04-30 | 38d |  | 496h | 496h | 40,800,000 | 52,480,000 | 40,800,000 |
| 62 | 4.2.1.1 | **Xây dựng giao diện websites** |  | 30d | 2024-03-08 A | 2024-04-18 A |  | 100% | 2024-03-08 | 2024-04-18 | 30d |  | 416h | 416h | 33,280,000 | 46,080,000 | 33,280,000 |
| 63 | 4.2.1.1.1 | **Xây dựng giao diện User** |  | 23d | 2024-03-08 A | 2024-04-09 A |  | 100% | 2024-03-08 | 2024-04-09 | 23d |  | 320h | 320h | 25,600,000 | 30,720,000 | 25,600,000 |
| 64 | 4.2.1.1.1.1 | **Phát triển giao diện Homepage** |  | 1d | 2024-03-08 A | 2024-03-08 A |  | 100% | 2024-03-08 | 2024-03-08 | 1d |  | 16h | 16h | 1,280,000 | 2,560,000 | 1,280,000 |
| 65 | 4.2.1.1.1.1.1 | Xây dựng Header |  | 1d | 2024-03-08 A | 2024-03-08 A | 59 | 100% | 2024-03-08 | 2024-03-08 | 1d | Thư | 8h | 8h | 640,000 | 1,280,000 | 640,000 |
| 66 | 4.2.1.1.1.1.2 | Xây dựng Footer |  | 1d | 2024-03-08 A | 2024-03-08 A | 65FF | 100% | 2024-03-08 | 2024-03-08 | 1d | Thư | 8h | 8h | 640,000 | 1,280,000 | 640,000 |
| 67 | 4.2.1.1.1.2 | Phát triển trang Login |  | 3d | 2024-03-11 A | 2024-03-13 A | 66 | 100% | 2024-03-11 | 2024-03-13 | 3d | Quân; Thư | 48h | 48h | 3,840,000 | 3,840,000 | 3,840,000 |
| 68 | 4.2.1.1.1.3 | Phát triển giao diện Danh sách tin đăng |  | 3d | 2024-03-14 A | 2024-03-18 A | 67 | 100% | 2024-03-14 | 2024-03-21 | 6d | Quân; Thư | 48h | 48h | 3,840,000 | 7,680,000 | 3,840,000 |
| 69 | 4.2.1.1.1.4 | Phát triển giao diện chi tiết tin đăng |  | 3d | 2024-03-22 A | 2024-03-26 A | 68 | 100% | 2024-03-22 | 2024-03-26 | 3d | Quân; Thư | 48h | 48h | 3,840,000 | 3,840,000 | 3,840,000 |
| 70 | 4.2.1.1.1.5 | Phát triển giao diện quản lý tài khoản |  | 2d | 2024-03-27 A | 2024-03-28 A | 69 | 100% | 2024-03-27 | 2024-03-28 | 2d | Quân; Thư | 32h | 32h | 2,560,000 | 2,560,000 | 2,560,000 |
| 71 | 4.2.1.1.1.6 | Phát triển giao diện Quản lý tin đã lưu |  | 2d | 2024-03-29 A | 2024-04-01 A | 70 | 100% | 2024-03-29 | 2024-04-01 | 2d | Quân; Thư | 32h | 32h | 2,560,000 | 2,560,000 | 2,560,000 |
| 72 | 4.2.1.1.1.7 | Phát triển giao diện quản lý tin đã đăng |  | 3d | 2024-04-02 A | 2024-04-04 A | 71 | 100% | 2024-04-02 | 2024-04-04 | 3d | Quân; Thư | 48h | 48h | 3,840,000 | 3,840,000 | 3,840,000 |
| 73 | 4.2.1.1.1.8 | Phát triển giao diện đăng tin |  | 3d | 2024-04-05 A | 2024-04-09 A | 72 | 100% | 2024-04-05 | 2024-04-09 | 3d | Quân; Thư | 48h | 48h | 3,840,000 | 3,840,000 | 3,840,000 |
| 74 | 4.2.1.1.2 | **Xây dựng giao diện Admin** |  | 8d | 2024-04-09 A | 2024-04-18 A |  | 100% | 2024-04-09 | 2024-04-18 | 8d |  | 96h | 96h | 7,680,000 | 15,360,000 | 7,680,000 |
| 75 | 4.2.1.1.2.1 | Phát triển giao diện Dardboard |  | 5d | 2024-04-09 A | 2024-04-15 A |  | 100% | 2024-04-09 | 2024-04-15 | 5d | Quân | 40h | 40h | 3,200,000 | 6,400,000 | 3,200,000 |
| 76 | 4.2.1.1.2.2 | Phát triển giao diện Quản lý user |  | 3d | 2024-04-10 A | 2024-04-12 A | 73 | 100% | 2024-04-10 | 2024-04-12 | 3d | Quân | 24h | 24h | 1,920,000 | 3,840,000 | 1,920,000 |
| 77 | 4.2.1.1.2.3 | Phát triển giao diện Quản lý tin đăng |  | 3d | 2024-04-15 A | 2024-04-17 A | 76 | 100% | 2024-04-15 | 2024-04-17 | 3d | Quân | 24h | 24h | 1,920,000 | 3,840,000 | 1,920,000 |
| 78 | 4.2.1.1.2.4 | Phát triển giao diện xét duyệt tin đăng |  | 1d | 2024-04-18 A | 2024-04-18 A | 77 | 100% | 2024-04-18 | 2024-04-18 | 1d | Quân | 8h | 8h | 640,000 | 1,280,000 | 640,000 |

Notes:
- 59: Cấu h́nh môi trường phát triển (IDE, framework, công cụ kiểm tra mă, etc.)

| ID | WBS | Task | Duration | Start | Finish | Predecessors | Complete | Baseline start | Baseline finish | Baseline duration | Resources | Work | Actual work | Cost | Baseline cost | Actual cost |
| --- | --- | --- | --- | --- | --- | --- | --- | --- | --- | --- | --- | --- | --- | --- | --- | --- |
| 79 | 4.2.1.2 | **Xây dựng giao diện Mobile** | 8d | 2024-04-19 A | 2024-04-30 A |  | 100% | 2024-04-19 | 2024-04-30 | 8d |  | 80h | 80h | 7,520,000 | 6,400,000 | 7,520,000 |
| 80 | 4.2.1.2.1 | Phát triển màn hình Onboard | 1d | 2024-04-19 A | 2024-04-19 A | 78 | 100% | 2024-04-19 | 2024-04-19 | 1d | Thư | 8h | 8h | 640,000 | 640,000 | 640,000 |
| 81 | 4.2.1.2.2 | Phát triển Menu điều hướng | 1d | 2024-04-22 A | 2024-04-22 A | 80 | 100% | 2024-04-22 | 2024-04-22 | 1d | Thư | 8h | 8h | 640,000 | 640,000 | 640,000 |
| 82 | 4.2.1.2.3 | Phát triển màn hình đăng nhập | 1d | 2024-04-23 A | 2024-04-23 A | 81 | 100% | 2024-04-23 | 2024-04-23 | 1d | Thư | 8h | 8h | 640,000 | 640,000 | 640,000 |
| 83 | 4.2.1.2.4 | Phát triển màn hình chính hiển thị list tin đăng | 1d | 2024-04-24 A | 2024-04-24 A | 82 | 100% | 2024-04-24 | 2024-04-24 | 1d | Thư | 8h | 8h | 640,000 | 640,000 | 640,000 |
| 84 | 4.2.1.2.5 | Phát triển màn hình chi tiết tin đăng | 1d | 2024-04-25 A | 2024-04-25 A | 83 | 100% | 2024-04-25 | 2024-04-25 | 1d | Quân | 8h | 8h | 640,000 | 640,000 | 640,000 |
| 85 | 4.2.1.2.6 | Phát triển màn hình quản lý tài khoản | 1d | 2024-04-26 A | 2024-04-26 A | 84 | 100% | 2024-04-26 | 2024-04-26 | 1d | Quân | 8h | 8h | 640,000 | 640,000 | 640,000 |
| 86 | 4.2.1.2.7 | Phát triển giao diện Quản lý tin đã lưu | 1d | 2024-04-29 A | 2024-04-29 A | 85 | 100% | 2024-04-29 | 2024-04-29 | 1d | Quân | 8h | 8h | 640,000 | 640,000 | 640,000 |
| 87 | 4.2.1.2.8 | Phát triển giao diện quản lý tin đã đăng | 1d | 2024-04-30 A | 2024-04-30 A | 86 | 100% | 2024-04-30 | 2024-04-30 | 1d | Thư | 8h | 8h | 640,000 | 640,000 | 640,000 |
| 88 | 4.2.1.2.9 | Phát triển giao diện đăng tin | 2d | 2024-04-29 A | 2024-04-30 A | 87FF | 100% | 2024-04-29 | 2024-04-30 | 2d | Diện | 16h | 16h | 2,400,000 | 1,280,000 | 2,400,000 |
| 89 | 4.2.2 | **Phát triển back-end** | 42d | 2024-03-07 A | 2024-05-03 A |  | 100% | 2024-03-07 | 2024-05-03 | 42d |  | 640h | 640h | 62,400,000 | 74,160,000 | 62,400,000 |
| 90 | 4.2.2.1 | **Xây dựng cơ sở hạ tầng** | 1d | 2024-03-07 A | 2024-03-07 A |  | 100% | 2024-03-07 | 2024-03-07 | 1d |  | 48h | 48h | 4,960,000 | 4,960,000 | 4,960,000 |
| 91 | 4.2.2.1.1 | Triển khai cơ sở dữ liệu | 1d | 2024-03-07 A | 2024-03-07 A | 59SS | 100% | 2024-03-07 | 2024-03-07 | 1d | Diện; Quân; Thư | 24h | 24h | 2,480,000 | 2,480,000 | 2,480,000 |
| 92 | 4.2.2.1.2 | Thiết lập môi trường phát triển và triển khai hệ thống | 1d | 2024-03-07 A | 2024-03-07 A | 91FF | 100% | 2024-03-07 | 2024-03-07 | 1d | Diện; Quân; Thư | 24h | 24h | 2,480,000 | 2,480,000 | 2,480,000 |
| 93 | 4.2.2.2 | **Website** | 27d | 2024-03-14 A | 2024-04-19 A |  | 100% | 2024-03-14 | 2024-04-19 | 27d |  | 376h | 376h | 36,800,000 | 53,840,000 | 36,800,000 |
| 94 | 4.2.2.2.1 | **Xây dựng các chức năng phần User** | 22d | 2024-03-14 A | 2024-04-12 A |  | 100% | 2024-03-14 | 2024-04-12 | 22d |  | 304h | 304h | 31,040,000 | 42,320,000 | 31,040,000 |
| 95 | 4.2.2.2.1.1 | Phát triển chức năng đăng nhập | 3d | 2024-03-14 A | 2024-03-18 A | 67 | 100% | 2024-03-14 | 2024-03-18 | 3d | Diện; Quân | 48h | 48h | 5,520,000 |  | 5,520,000 |
| 96 | 4.2.2.2.1.2 | Phát triển chức năng đăng ký | 3d | 2024-03-14 A | 2024-03-18 A | 67 | 100% | 2024-03-14 | 2024-03-18 | 3d | Diện; Quân | 48h | 48h | 5,520,000 | 5,520,000 | 5,520,000 |
| 97 | 4.2.2.2.1.3 | Phát triển chức năng hiển thị tin đăng | 3d | 2024-03-22 A | 2024-03-26 A | 68 | 100% | 2024-03-22 | 2024-03-26 | 3d | Diện; Quân | 48h | 48h | 5,520,000 | 5,520,000 | 5,520,000 |
| 98 | 4.2.2.2.1.4 | Phát triển chức năng hiển thị chi tiết tin đăng | 3d | 2024-03-22 A | 2024-03-26 A | 68 | 100% | 2024-03-22 | 2024-03-26 | 3d | Diện; Quân | 48h | 48h | 5,520,000 | 5,520,000 | 5,520,000 |
| 99 | 4.2.2.2.1.5 | Phát triển chức năng tìm kiếm tin đăng | 2d | 2024-03-22 A | 2024-03-25 A | 68 | 100% | 2024-03-22 | 2024-03-25 | 2d | Thư | 16h | 16h | 1,280,000 | 3,680,000 | 1,280,000 |
| 100 | 4.2.2.2.1.6 | Phát triển chức năng quản lý tài khoản | 2d | 2024-03-29 A | 2024-04-01 A | 70 | 100% | 2024-03-29 | 2024-04-01 | 2d | Quân | 16h | 16h | 1,280,000 | 3,680,000 | 1,280,000 |
| 101 | 4.2.2.2.1.7 | Phát triển chức năng lưu và quản lý các bài đăng đã lưu | 2d | 2024-04-02 A | 2024-04-03 A | 71 | 100% | 2024-04-02 | 2024-04-03 | 2d | Quân | 16h | 16h | 1,280,000 | 3,680,000 | 1,280,000 |
| 102 | 4.2.2.2.1.8 | Phát triển chức năng đăng bài | 3d | 2024-04-10 A | 2024-04-12 A | 73 | 100% | 2024-04-10 | 2024-04-12 | 3d | Quân | 24h | 24h | 1,920,000 | 5,520,000 | 1,920,000 |
| 103 | 4.2.2.2.1.9 | Phát triển chức năng quản lý và cập nhật các tin đã đăng | 3d | 2024-04-10 A | 2024-04-12 A | 73 | 100% | 2024-04-10 | 2024-04-12 | 3d | Thư | 24h | 24h | 1,920,000 | 5,520,000 | 1,920,000 |
| 104 | 4.2.2.2.1.10 | Phát triển chức năng gửi contact | 2d | 2024-04-10 A | 2024-04-11 A | 73 | 100% | 2024-04-10 | 2024-04-11 | 2d | Thư | 16h | 16h | 1,280,000 | 3,680,000 | 1,280,000 |

| ID | WBS | Task | Type | Duration | Start | Finish | Predecessors | Complete | Baseline start | Baseline finish | Baseline duration | Constraint | Resources | Work | Actual work | Cost | Baseline cost | Actual cost |
| --- | --- | --- | --- | --- | --- | --- | --- | --- | --- | --- | --- | --- | --- | --- | --- | --- | --- | --- |
| 105 | 4.2.2.2.2 | **Xây dựng các chức năng phần Admin** |  | 8d | 2024-04-10 A | 2024-04-19 A |  | 100% | 2024-04-10 | 2024-04-19 | 8d |  |  | 72h | 72h | 5,760,000 | 11,520,000 | 5,760,000 |
| 106 | 4.2.2.2.2.1 | Phát triển chức năng thống kê dữ liệu |  | 3d | 2024-04-10 A | 2024-04-12 A | 76SS | 100% | 2024-04-10 | 2024-04-12 | 3d |  | Quân | 24h | 24h | 1,920,000 | 3,840,000 | 1,920,000 |
| 107 | 4.2.2.2.2.2 | Phát triển nhóm chức năng quản lý user |  | 2d | 2024-04-15 A | 2024-04-16 A | 76 | 100% | 2024-04-15 | 2024-04-16 | 2d |  | Thư | 16h | 16h | 1,280,000 | 2,560,000 | 1,280,000 |
| 108 | 4.2.2.2.2.3 | Phát triển nhóm chức năng quản lý tin đăng |  | 2d | 2024-04-18 A | 2024-04-19 A | 77 | 100% | 2024-04-18 | 2024-04-19 | 2d |  | Quân | 16h | 16h | 1,280,000 | 2,560,000 | 1,280,000 |
| 109 | 4.2.2.2.2.4 | Phát triển chức năng phê duyệt tin đăng |  | 1d | 2024-04-19 A | 2024-04-19 A | 78 | 100% | 2024-04-19 | 2024-04-19 | 1d |  | Thư | 8h | 8h | 640,000 | 1,280,000 | 640,000 |
| 110 | 4.2.2.2.2.5 | Phát triển chức năng quản lý contact |  | 1d | 2024-04-12 A | 2024-04-12 A | 104 | 100% | 2024-04-12 | 2024-04-12 | 1d |  | Quân | 8h | 8h | 640,000 | 1,280,000 | 640,000 |
| 111 | 4.2.2.3 | **Mobile** |  | 8d | 2024-04-24 A | 2024-05-03 A |  | 100% | 2024-04-24 | 2024-05-03 | 8d |  |  | 216h | 216h | 20,640,000 | 15,360,000 | 20,640,000 |
| 112 | 4.2.2.3.1 | Phát triển chức năng đăng nhập |  | 3d | 2024-04-24 A | 2024-04-26 A | 82 | 100% | 2024-04-24 | 2024-04-26 | 3d |  | Thư | 24h | 24h | 1,920,000 | 1,920,000 | 1,920,000 |
| 113 | 4.2.2.3.2 | Phát triển chức năng đăng ký |  | 3d | 2024-04-24 A | 2024-04-26 A | 82 | 100% | 2024-04-24 | 2024-04-26 | 3d |  | Quân | 24h | 24h | 1,920,000 | 1,920,000 | 1,920,000 |
| 114 | 4.2.2.3.3 | Phát triển chức năng hiển thị tin đăng |  | 3d | 2024-04-25 A | 2024-04-29 A | 83 | 100% | 2024-04-25 | 2024-04-29 | 3d |  | Diện | 24h | 24h | 3,600,000 | 1,920,000 | 3,600,000 |
| 115 | 4.2.2.3.4 | Phát triển chức năng hiển thị chi tiết tin đăng |  | 3d | 2024-04-26 A | 2024-04-30 A | 84 | 100% | 2024-04-26 | 2024-04-30 | 3d |  | Thư | 24h | 24h | 1,920,000 | 1,920,000 | 1,920,000 |
| 116 | 4.2.2.3.5 | Phát triển chức năng tìm kiếm tin đăng |  | 3d | 2024-04-26 A | 2024-04-30 A | 84 | 100% | 2024-04-26 | 2024-04-30 | 3d |  | Quân | 24h | 24h | 1,920,000 | 1,920,000 | 1,920,000 |
| 117 | 4.2.2.3.6 | Phát triển chức năng quản lý tài khoản |  | 3d | 2024-04-29 A | 2024-05-01 A | 85 | 100% | 2024-04-29 | 2024-05-01 | 3d |  | Quân | 24h | 24h | 1,920,000 | 1,920,000 | 1,920,000 |
| 118 | 4.2.2.3.7 | Phát triển chức năng lưu và quản lý các bài đăng đã lưu |  | 3d | 2024-04-30 A | 2024-05-02 A | 86 | 100% | 2024-04-30 | 2024-05-02 | 3d |  | Diện | 24h | 24h | 3,600,000 | 1,920,000 | 3,600,000 |
| 119 | 4.2.2.3.8 | Phát triển chức năng đăng bài |  | 3d | 2024-05-01 A | 2024-05-03 A | 87 | 100% | 2024-05-01 | 2024-05-03 | 3d |  | Quân | 24h | 24h | 1,920,000 | 1,920,000 | 1,920,000 |
| 120 | 4.2.2.3.9 | Phát triển chức năng quản lý và cập nhật các tin đã đăng |  | 3d | 2024-05-01 A | 2024-05-03 A | 87 | 100% | 2024-05-01 | 2024-05-03 | 3d |  | Thư | 24h | 24h | 1,920,000 |  | 1,920,000 |
| 121 | 4.3 | Phát triển phần mềm - Complete | milestone | 0d | 2024-05-03 A | 2024-05-03 A |  | 100% | 2024-05-03 | 2024-05-03 | 0d | start no earlier than 2024-05-03 |  |  |  |  |  |  |
| 122 | 5 | **Kiểm thử và Đảm bảo chất lượng** |  | 18d | 2024-05-06 A | 2024-05-30 A |  | 100% | 2024-05-06 | 2024-05-30 | 18d |  |  | 248h | 248h | 28,240,000 | 21,520,000 | 28,240,000 |
| 123 | 5.1 | **Lập Kế hoạch Kiểm thử:** |  | 1d | 2024-05-06 A | 2024-05-06 A |  | 100% | 2024-05-06 | 2024-05-06 | 1d |  |  | 24h | 24h | 3,600,000 | 3,600,000 | 3,600,000 |
| 124 | 5.1.1 | Xác định phạm vi và mục tiêu kiểm thử. |  | 1d | 2024-05-06 A | 2024-05-06 A | 120 | 100% | 2024-05-06 | 2024-05-06 | 1d |  | Diện | 8h | 8h | 1,200,000 | 1,200,000 | 1,200,000 |
| 125 | 5.1.2 | Phân chia công việc kiểm thử thành các bước cụ thể. |  | 1d | 2024-05-06 A | 2024-05-06 A | 124SS | 100% | 2024-05-06 | 2024-05-06 | 1d |  | Diện | 8h | 8h | 1,200,000 | 1,200,000 | 1,200,000 |
| 126 | 5.1.3 | Xác định tài nguyên và thời gian cần thiết cho kiểm thử. |  | 1d | 2024-05-06 A | 2024-05-06 A | 124SS | 100% | 2024-05-06 | 2024-05-06 | 1d |  | Diện | 8h | 8h | 1,200,000 | 1,200,000 | 1,200,000 |
| 127 | 5.2 | **Kiểm thử Hệ thống (System Testing):** |  | 2d | 2024-05-07 A | 2024-05-08 A |  | 100% | 2024-05-07 | 2024-05-08 | 2d |  |  | 24h | 24h | 1,920,000 | 1,920,000 | 1,920,000 |
| 128 | 5.2.1 | Kiểm tra tính đúng đắn của hệ thống như một toàn thể. |  | 1d | 2024-05-07 A | 2024-05-07 A | 126 | 100% | 2024-05-07 | 2024-05-07 | 1d |  | Quân | 8h | 8h | 640,000 | 640,000 | 640,000 |
| 129 | 5.2.2 | Kiểm tra tính tương thích trên các trình duyệt và nền tảng khác nhau. |  | 1d | 2024-05-07 A | 2024-05-07 A | 128SS | 100% | 2024-05-07 | 2024-05-07 | 1d |  | Quân | 8h | 8h | 640,000 | 640,000 | 640,000 |
| 130 | 5.2.3 | Kiểm tra tính ổn định và hiệu suất của hệ thống dưới tải công việc lớn. |  | 1d | 2024-05-08 A | 2024-05-08 A | 129 | 100% | 2024-05-08 | 2024-05-08 | 1d |  | Quân | 8h | 8h | 640,000 | 640,000 | 640,000 |

| ID | WBS | Task | Type | Duration | Start | Finish | Predecessors | Complete | Remaining | Baseline start | Baseline finish | Baseline duration | Total slack | Constraint | Resources | Work | Actual work | Cost | Baseline cost | Actual cost |
| --- | --- | --- | --- | --- | --- | --- | --- | --- | --- | --- | --- | --- | --- | --- | --- | --- | --- | --- | --- | --- |
| 131 | 5.3 | **Kiểm thử Giao diện Người dùng (User Interface Testing):** |  | 10d | 2024-05-07 A | 2024-05-20 A |  | 100% |  | 2024-05-07 | 2024-05-20 | 10d |  |  |  | 80h | 80h | 10,880,000 | 6,400,000 | 10,880,000 |
| 132 | 5.3.1 | Kiểm tra tính nhất quán và dễ sử dụng của giao diện người dùng. |  | 8d | 2024-05-07 A | 2024-05-16 A | 126 | 100% |  | 2024-05-07 | 2024-05-16 | 8d |  |  | Diện | 64h | 64h | 9,600,000 | 5,120,000 | 9,600,000 |
| 133 | 5.3.2 | Kiểm tra tính thân thiện với người dùng và trải nghiệm người dùng. |  | 2d | 2024-05-17 A | 2024-05-20 A | 132 | 100% |  | 2024-05-17 | 2024-05-20 | 2d |  |  | Thư | 16h | 16h | 1,280,000 | 1,280,000 | 1,280,000 |
| 134 | 5.4 | **Kiểm thử Tích hợp (Integration Testing):** |  | 1d | 2024-05-21 A | 2024-05-21 A |  | 100% |  | 2024-05-21 | 2024-05-21 | 1d |  |  |  | 16h | 16h | 1,280,000 | 1,280,000 | 1,280,000 |
| 135 | 5.4.1 | Kiểm tra tính tương thích và giao tiếp giữa các thành phần trong hệ thống. |  | 1d | 2024-05-21 A | 2024-05-21 A | 133 | 100% |  | 2024-05-21 | 2024-05-21 | 1d |  |  | Quân | 8h | 8h | 640,000 | 640,000 | 640,000 |
| 136 | 5.4.2 | Kiểm tra tính toàn vẹn dữ liệu khi tích hợp các module. |  | 1d | 2024-05-21 A | 2024-05-21 A | 135SS | 100% |  | 2024-05-21 | 2024-05-21 | 1d |  |  | Quân | 8h | 8h | 640,000 | 640,000 | 640,000 |
| 137 | 5.5 | **Kiểm thử Đơn vị (Unit Testing):** |  | 4d | 2024-05-17 A | 2024-05-22 A |  | 100% |  | 2024-05-17 | 2024-05-22 | 4d |  |  |  | 32h | 32h | 4,800,000 | 2,560,000 | 4,800,000 |
| 138 | 5.5.1 | Kiểm tra từng thành phần (function, method) trong mã nguồn. |  | 2d | 2024-05-17 A | 2024-05-20 A | 132 | 100% |  | 2024-05-17 | 2024-05-20 | 2d |  |  | Diện | 16h | 16h | 2,400,000 | 1,280,000 | 2,400,000 |
| 139 | 5.5.2 | Xác định và khắc phục lỗi ở mức độ cụ thể nhất. |  | 2d | 2024-05-21 A | 2024-05-22 A | 138 | 100% |  | 2024-05-21 | 2024-05-22 | 2d |  |  | Diện | 16h | 16h | 2,400,000 | 1,280,000 | 2,400,000 |
| 140 | 5.6 | **Kiểm thử Tự động (Automated Testing):** |  | 3d | 2024-05-21 A | 2024-05-23 A |  | 100% |  | 2024-05-21 | 2024-05-23 | 3d |  |  |  | 24h | 24h | 1,920,000 | 1,920,000 | 1,920,000 |
| 141 | 5.6.1 | Tự động hóa các bài kiểm thử để tăng cường hiệu suất và tiết kiệm thời gian. |  | 2d | 2024-05-21 A | 2024-05-22 A | 138 | 100% |  | 2024-05-21 | 2024-05-22 | 2d |  |  | Quân | 16h | 16h | 1,280,000 | 1,280,000 | 1,280,000 |
| 142 | 5.6.2 | Sử dụng các công cụ tự động hóa để thực hiện các kịch bản kiểm thử. |  | 1d | 2024-05-23 A | 2024-05-23 A | 141 | 100% |  | 2024-05-23 | 2024-05-23 | 1d |  |  | Quân | 8h | 8h | 640,000 | 640,000 | 640,000 |
| 143 | 5.7 | **Kiểm thử Bảo mật (Security Testing):** |  | 3d | 2024-05-23 A | 2024-05-27 A |  | 100% |  | 2024-05-23 | 2024-05-27 | 3d |  |  |  | 24h | 24h | 1,920,000 | 1,920,000 | 1,920,000 |
| 144 | 5.7.1 | Kiểm tra tính bảo mật của hệ thống và dữ liệu. |  | 1d | 2024-05-23 A | 2024-05-23 A | 141 | 100% |  | 2024-05-23 | 2024-05-23 | 1d |  |  | Quân | 8h | 8h | 640,000 | 640,000 | 640,000 |
| 145 | 5.7.2 | Phát hiện và khắc phục các lỗ hổng bảo mật. |  | 2d | 2024-05-24 A | 2024-05-27 A | 144 | 100% |  | 2024-05-24 | 2024-05-27 | 2d |  |  | Quân | 16h | 16h | 1,280,000 | 1,280,000 | 1,280,000 |
| 146 | 5.8 | **Kiểm thử Tính năng (Functional Testing):** |  | 2d | 2024-05-24 A | 2024-05-27 A |  | 100% |  | 2024-05-24 | 2024-05-27 | 2d |  |  |  | 16h | 16h | 1,280,000 | 1,280,000 | 1,280,000 |
| 147 | 5.8.1 | Kiểm tra tính đúng đắn của các chức năng và tính năng của hệ thống. |  | 1d | 2024-05-24 A | 2024-05-24 A | 144 | 100% |  | 2024-05-24 | 2024-05-24 | 1d |  |  | Quân | 8h | 8h | 640,000 | 640,000 | 640,000 |
| 148 | 5.8.2 | Đảm bảo rằng hệ thống hoạt động như mong đợi từ góc độ người dùng. |  | 1d | 2024-05-27 A | 2024-05-27 A | 147 | 100% |  | 2024-05-27 | 2024-05-27 | 1d |  |  | Quân | 8h | 8h | 640,000 | 640,000 | 640,000 |
| 149 | 5.9 | **Kiểm thử Đối với Người dùng Cuối (User Acceptance Testing - UAT):** |  | 1d | 2024-05-28 A | 2024-05-28 A |  | 100% |  | 2024-05-28 | 2024-05-28 | 1d |  |  |  | 8h | 8h | 640,000 | 640,000 | 640,000 |
| 150 | 5.9.1 | Kiểm thử Hồi quy (Regression Testing): |  | 1d | 2024-05-28 A | 2024-05-28 A | 148 | 100% |  | 2024-05-28 | 2024-05-28 | 1d |  |  | Quân | 8h | 8h | 640,000 | 640,000 | 640,000 |
| 151 | 5.10 | Kiểm thử và Đảm bảo chất lượng - Complete | milestone | 0d | 2024-05-30 A | 2024-05-30 A |  | 100% |  | 2024-05-30 | 2024-05-30 | 0d |  | start no earlier than 2024-05-30 |  |  |  |  |  |  |
| 152 | 6 | **Triển khai và Duy trì** |  | 29d | 2024-05-29 A | 2024-07-09 |  | 30% | 20.43d | 2024-05-29 | 2024-07-09 | 29d | 0d |  |  | 720h | 264h | 67,680,000 | 72,160,000 | 28,400,000 |
| 153 | 6.1 | **Triển khai sản phẩm** |  | 1d | 2024-05-29 A | 2024-05-29 A |  | 100% |  | 2024-05-29 | 2024-05-29 | 1d |  |  |  | 24h | 24h | 3,600,000 | 3,600,000 | 3,600,000 |
| 154 | 6.1.1 | Chuẩn bị môi trường triển khai |  | 1d | 2024-05-29 A | 2024-05-29 A | 150 | 100% |  | 2024-05-29 | 2024-05-29 | 1d |  |  | Diện | 8h | 8h | 1,200,000 | 1,200,000 | 1,200,000 |
| 155 | 6.1.2 | Tiến hành triển khai sản phẩm vào môi trường sản xuất |  | 1d | 2024-05-29 A | 2024-05-29 A | 154SS | 100% |  | 2024-05-29 | 2024-05-29 | 1d |  |  | Diện | 8h | 8h | 1,200,000 | 1,200,000 | 1,200,000 |
| 156 | 6.1.3 | Kiểm tra và xác nhận tính ổn định của sản phẩm sau khi triển khai |  | 1d | 2024-05-29 A | 2024-05-29 A | 154SS | 100% |  | 2024-05-29 | 2024-05-29 | 1d |  |  | Diện | 8h | 8h | 1,200,000 | 1,200,000 | 1,200,000 |

Notes:
- 149: Thực hiện kiểm thử bởi người dùng cuối để đảm bảo rằng hệ thống đáp ứng được yêu cầu và mong đợi của họ.
- 150: Kiểm tra lại các chức năng đă kiểm thử để đảm bảo rằng các sửa đổi không gây ra các vấn đề mới.

| ID | WBS | Task | Type | Duration | Start | Finish | Predecessors | Complete | Baseline start | Baseline finish | Baseline duration | Total slack | Constraint | Resources | Work | Actual work | Cost | Baseline cost | Actual cost |
| --- | --- | --- | --- | --- | --- | --- | --- | --- | --- | --- | --- | --- | --- | --- | --- | --- | --- | --- | --- |
| 157 | 6.2 | **Duy trì và Hỗ trợ:** |  | 10d | 2024-05-30 A | 2024-06-12 A |  | 100% | 2024-05-30 | 2024-06-12 | 10d |  |  |  | 240h | 240h | 24,800,000 | 24,800,000 | 24,800,000 |
| 158 | 6.2.1 | Xây dựng kế hoạch duy trì và bảo trì |  | 2d | 2024-05-30 A | 2024-05-31 A | 156 | 100% | 2024-05-30 | 2024-05-31 | 2d |  |  | Diện; Quân; Thư | 48h | 48h | 4,960,000 | 4,960,000 | 4,960,000 |
| 159 | 6.2.2 | Phát triển tài liệu hướng dẫn sử dụng và bảo trì |  | 5d | 2024-06-03 A | 2024-06-07 A | 158 | 100% | 2024-06-03 | 2024-06-07 | 5d |  |  | Diện; Quân; Thư | 120h | 120h | 12,400,000 | 12,400,000 | 12,400,000 |
| 160 | 6.2.3 | Xây dựng hệ thống hỗ trợ và cập nhật |  | 3d | 2024-06-10 A | 2024-06-12 A | 159 | 100% | 2024-06-10 | 2024-06-12 | 3d |  |  | Diện; Quân; Thư | 72h | 72h | 7,440,000 | 7,440,000 | 7,440,000 |
| 161 | 6.3 | **Hỗ trợ người dùng:** |  | 8d | 2024-06-13 | 2024-06-24 |  |  | 2024-06-13 | 2024-06-24 | 8d | 0d |  |  | 64h |  | 5,120,000 | 9,600,000 |  |
| 162 | 6.3.1 | Cung cấp hỗ trợ và giải đáp thắc mắc cho người dùng |  | 5d | 2024-06-13 | 2024-06-19 | 160 |  | 2024-06-13 | 2024-06-19 | 5d | 0d |  | Thư | 40h |  | 3,200,000 | 6,000,000 |  |
| 163 | 6.3.2 | Tiếp nhận và xử lý các báo cáo lỗi từ người dùng |  | 3d | 2024-06-20 | 2024-06-24 | 162 |  | 2024-06-20 | 2024-06-24 | 3d | 0d |  | Thư | 24h |  | 1,920,000 | 3,600,000 |  |
| 164 | 6.4 | **Duy trì và Cập nhật:** |  | 9d | 2024-06-25 | 2024-07-05 |  |  | 2024-06-25 | 2024-07-05 | 9d | 0d |  |  | 144h |  | 11,520,000 | 11,520,000 |  |
| 165 | 6.4.1 | Kiểm tra và duy trì hệ thống hàng ngày |  | 2d | 2024-06-25 | 2024-06-26 | 163 |  | 2024-06-25 | 2024-06-26 | 2d | 0d |  | Quân; Thư | 32h |  | 2,560,000 | 2,560,000 |  |
| 166 | 6.4.2 | Cập nhật và bảo trì hệ thống theo yêu cầu và phản hồi từ người dùng |  | 7d | 2024-06-27 | 2024-07-05 | 165 |  | 2024-06-27 | 2024-07-05 | 7d | 1d |  | Quân; Thư | 112h |  | 8,960,000 | 8,960,000 |  |
| 167 | 6.5 | **Tối ưu hóa và Nâng cấp:** |  | 7d | 2024-06-20 | 2024-06-28 |  |  | 2024-06-20 | 2024-06-28 | 7d | 3d |  |  | 128h |  | 10,240,000 | 10,240,000 |  |
| 168 | 6.5.1 | Phân tích và tối ưu hóa hiệu suất hệ thống |  | 4d | 2024-06-20 | 2024-06-25 | 163SS |  | 2024-06-20 | 2024-06-25 | 4d | 9d |  | Quân; Thư | 64h |  | 5,120,000 | 5,120,000 |  |
| 169 | 6.5.2 | Phát triển và triển khai các bản cập nhật và nâng cấp mới |  | 4d | 2024-06-25 | 2024-06-28 | 165SS |  | 2024-06-25 | 2024-06-28 | 4d | 0d |  | Quân; Thư | 64h |  | 5,120,000 | 5,120,000 |  |
| 170 | 6.6 | **Sao lưu và Phục hồi:** |  | 4d | 2024-07-01 | 2024-07-04 |  |  | 2024-07-01 | 2024-07-04 | 4d | 0d |  |  | 72h |  | 7,440,000 | 7,440,000 |  |
| 171 | 6.6.1 | Xây dựng kế hoạch sao lưu dữ liệu và hệ thống |  | 3d | 2024-07-01 | 2024-07-03 | 169 |  | 2024-07-01 | 2024-07-03 | 3d | 0d |  | Diện; Quân; Thư | 72h |  | 7,440,000 | 7,440,000 |  |
| 172 | 6.6.2 | Kiểm tra và thực hiện thử nghiệm phục hồi |  | 1d | 2024-07-04 | 2024-07-04 | 171 |  | 2024-07-04 | 2024-07-04 | 1d | 0d |  |  |  |  |  |  |  |
| 173 | 6.7 | **Đánh giá hiệu suất và Học tập:** |  | 2d | 2024-07-05 | 2024-07-08 |  |  | 2024-07-05 | 2024-07-08 | 2d | 0d |  |  | 48h |  | 4,960,000 | 4,960,000 |  |
| 174 | 6.7.1 | Thu thập dữ liệu và phân tích hiệu suất hệ thống |  | 1d | 2024-07-05 | 2024-07-05 | 172 |  | 2024-07-05 | 2024-07-05 | 1d | 0d |  | Quân; Thư; Diện | 24h |  | 2,480,000 | 2,480,000 |  |
| 175 | 6.7.2 | Học hỏi từ phản hồi của người dùng và kế hoạch cải thiện |  | 1d | 2024-07-08 | 2024-07-08 | 174 |  | 2024-07-08 | 2024-07-08 | 1d | 0d |  | Quân; Thư; Diện | 24h |  | 2,480,000 | 2,480,000 |  |
| 176 | 6.8 | Triển khai và Duy trì - Complete | milestone | 0d | 2024-07-09 | 2024-07-09 |  |  | 2024-07-09 | 2024-07-09 | 0d | 0d | start no earlier than 2024-07-09 |  |  |  |  |  |  |
